# ZPI_GH

Schedule from MS Project, 2018-12-03 to 2019-05-08, costs in zł, A marks actual dates.

## Calendars

- Standardowy: Mon-Fri 09:00-13:00, 14:00-18:00; Sat-Sun off. Exceptions (off unless hours are given): 2018-12-24 to 2018-12-26 (Święta BN), 2019-01-01 (Nowy Rok).

## Resources

| Resource | Group | Unit | Rate |
| --- | --- | --- | --- |
| Project Manager | Zespół |  | 90 |
| Junior Android Developer | Zespół |  | 35 |
| Junior iOS Developer | Zespół |  | 35 |
| Senior Andorid Developer | Zespół |  | 75 |
| Senior iOS Developer | Zespół |  | 75 |
| Tester | Zespół |  | 50 |
| UX Designer | Zespół |  | 50 |
| Komputery | Wyposażenie | szt. | 5000 |
| Laptopy | Wyposażenie | szt. | 5000 |
| Akcesoria (PC/Laptop) | Wyposażenie | szt. | 1500 |
| Licencje Oprogramowań | Inne | szt. |  |
| Publikacja w sklepach mobilnych | Inne |  |  |
| Projektor | Wyposażenie |  | 4500 |
| Tablica interaktywna | Wyposażenie |  | 10000 |
| Serwisant IT | Zespół |  | 35 |

## Schedule

| ID | WBS | Task | Type | Duration | Start | Finish | Predecessors | Complete | Remaining | Total slack | Constraint | Resources | Work | Actual work | Cost | Actual cost |
| --- | --- | --- | --- | --- | --- | --- | --- | --- | --- | --- | --- | --- | --- | --- | --- | --- |
| 1 | 1 | **Faza I - Analiza wymagań** |  | 14d | 2018-12-03 A | 2018-12-20 A |  | 100% |  |  |  |  | 400h | 400h | 23,920 | 23,920 |
| 2 | 1.1 | Przygotowanie dokumentu "Wymagania "Sport Bet" |  | 6d | 2018-12-03 A | 2018-12-10 A |  | 100% |  |  | start no earlier than 2018-12-03 | Junior Android Developer; Junior iOS Developer; Project Manager; UX Designer | 192h | 192h | 10,080 | 10,080 |
| 3 | 1.2 | Konsultacje z projektantami aplikacji webowej |  | 4d | 2018-12-11 A | 2018-12-14 A | 2 | 100% |  |  |  | Project Manager; Senior Andorid Developer; Senior iOS Developer; UX Designer | 128h | 128h | 9,280 | 9,280 |
| 4 | 1.3 | Analiza aplikacji webowej |  | 3d | 2018-12-11 A | 2018-12-13 A | 2 | 100% |  |  |  | Junior Android Developer; Junior iOS Developer | 48h | 48h | 1,680 | 1,680 |
| 5 | 1.4 | Przygotowanie dokumentu "Raport analizy wymagań" |  | 3d | 2018-12-17 A | 2018-12-19 A | 3, 4 | 100% |  |  |  | Project Manager | 24h | 24h | 2,160 | 2,160 |
| 6 | 1.5 | Protokół odbioru fazy I | milestone | 1d | 2018-12-20 A | 2018-12-20 A | 5 | 100% |  |  |  | Project Manager | 8h | 8h | 720 | 720 |
| 7 | 2 | **Faza II - Projektowanie** |  | 9d | 2018-12-21 A | 2019-01-08 | 1 | 56% | 3.98d | 0d |  |  | 112h | 58h | 6,560 | 3,220 |
| 8 | 2.1 | Tworzenie szkiców interfejsu użytkownika |  | 5d | 2018-12-21 A | 2018-12-27 A |  | 100% |  |  |  | UX Designer | 40h | 40h | 2,000 | 2,000 |
| 9 | 2.2 | Weryfikacja szkiców UI |  | 1d | 2018-12-28 A | 2018-12-28 A | 8 | 100% |  |  |  | Project Manager | 8h | 8h | 720 | 720 |
| 10 | 2.3 | Poprawki szkiców UI |  | 5d | 2018-12-28 A | 2019-01-04 | 8 | 25% | 3.75d | 0d |  | UX Designer | 40h | 10h | 2,000 | 500 |
| 11 | 2.4 | Prezentacja zatwierdzonego szkicu |  | 1d | 2019-01-07 | 2019-01-07 | 10 |  |  | 0d |  | Project Manager; UX Designer | 16h |  | 1,120 |  |
| 12 | 2.5 | Protokół odbioru fazy II | milestone | 1d | 2019-01-08 | 2019-01-08 | 11 |  |  | 0d |  | Project Manager | 8h |  | 720 |  |
| 13 | 3 | **Faza III - Konfiguracja** |  | 7d | 2019-01-09 | 2019-01-17 | 7 |  |  | 0d |  |  | 144h |  | 112,140 |  |
| 14 | 3.1 | Przygotowanie miejsca pracy |  | 1d | 2019-01-09 | 2019-01-09 |  |  |  | 1d |  | Akcesoria (PC/Laptop) [10 szt.]; Komputery [10 szt.]; Laptopy [5 szt.]; Projektor; Tablica interaktywna; Serwisant IT | 8h |  | 104,780 |  |
| 15 | 3.2 | Wybór technologii oraz narzędzi |  | 2d | 2019-01-09 | 2019-01-10 |  |  |  | 0d |  | Senior Andorid Developer; Senior iOS Developer; UX Designer | 48h |  | 3,200 |  |
| 16 | 3.3 | Konfiguracja systemów operacyjnych pod wymagania członków zespołu |  | 1d | 2019-01-11 | 2019-01-11 | 14, 15 |  |  | 0d |  | Licencje Oprogramowań [0 szt.]; Serwisant IT | 8h |  | 280 |  |
| 17 | 3.4 | Instalacja niezbędnego oprogramowania |  | 1d | 2019-01-14 | 2019-01-14 | 16 |  |  | 0d |  | Serwisant IT | 8h |  | 280 |  |
| 18 | 3.5 | Konfiguracja oprogramowania |  | 2d | 2019-01-15 | 2019-01-16 | 17 |  |  | 0d |  | Junior Android Developer; Junior iOS Developer; Serwisant IT | 48h |  | 1,680 |  |
| 19 | 3.6 | Przetestowanie zastosowanych ustawień |  | 1d | 2019-01-14 | 2019-01-14 |  |  |  | 2d | start no earlier than 2019-01-14 | Senior Andorid Developer; Senior iOS Developer | 16h |  | 1,200 |  |
| 20 | 3.7 | Protokół odbioru fazy III | milestone | 1d | 2019-01-17 | 2019-01-17 | 19, 18 |  |  | 0d |  | Project Manager | 8h |  | 720 |  |
| 21 | 4 | **Faza IV - Implementacja** |  | 49d | 2019-01-18 | 2019-03-27 | 13 |  |  | 0d |  |  | 1640h |  | 95,560 |  |
| 22 | 4.1 | Tworzenie prototypu aplikacji |  | 17d | 2019-01-18 | 2019-02-11 |  |  |  | 0d |  | Junior Android Developer; Junior iOS Developer; Senior Andorid Developer; Senior iOS Developer; UX Designer | 408h |  | 21,760 |  |
| 23 | 4.2 | Stworzenie aplikacji z podstawową funkcjonalnością |  | 26d | 2019-01-18 | 2019-02-22 |  |  |  | 0d |  | Junior Android Developer; Junior iOS Developer; Senior Andorid Developer; Senior iOS Developer | 488h |  | 25,400 |  |
| 24 | 4.3 | Sprawdzenie przebiegu pracy |  | 1d | 2019-02-25 | 2019-02-25 | 22, 23 |  |  | 0d |  | Project Manager | 4h |  | 360 |  |
| 25 | 4.4 | Konsultacja z klientem |  | 10d | 2019-02-12 | 2019-02-25 | 22 |  |  | 0d |  | Project Manager; Senior Andorid Developer; Senior iOS Developer | 156h |  | 12,840 |  |
| 26 | 4.5 | Usprawnienie podstawowych funkcjonalności |  | 7d | 2019-02-26 | 2019-03-06 | 24, 25 |  |  | 0d |  | Junior Android Developer; Junior iOS Developer; Senior Andorid Developer; Senior iOS Developer | 112h |  | 6,160 |  |
| 27 | 4.6 | Rozszerzenie o kolejne funkcjonalności |  | 10d | 2019-02-26 | 2019-03-11 | 24 |  |  | 12d |  | Junior Android Developer; Junior iOS Developer; Senior Andorid Developer; Senior iOS Developer | 184h |  | 9,640 |  |
| 28 | 4.7 | Konsultacja z klientem |  | 3d | 2019-03-07 | 2019-03-11 | 26 |  |  | 0d |  | Project Manager; Senior Andorid Developer; Senior iOS Developer | 48h |  | 3,960 |  |
| 29 | 4.8 | Usprawnienie aplikacji |  | 7d | 2019-03-12 | 2019-03-20 | 28 |  |  | 0d |  | Senior Andorid Developer; Senior iOS Developer | 112h |  | 8,400 |  |
| 30 | 4.9 | Weryfikacja funkcjonalności |  | 3d | 2019-03-21 | 2019-03-25 | 29 |  |  | 0d |  | Junior Android Developer; Junior iOS Developer; Project Manager; UX Designer | 96h |  | 5,040 |  |
| 31 | 4.10 | Prezentacja aplikacji |  | 1d | 2019-03-26 | 2019-03-26 | 30 |  |  | 0d |  | Junior Android Developer; Junior iOS Developer; Project Manager | 24h |  | 1,280 |  |
| 32 | 4.11 | Protokół odbioru fazy IV | milestone | 1d | 2019-03-27 | 2019-03-27 | 31 |  |  | 0d |  | Project Manager | 8h |  | 720 |  |

| ID | WBS | Task | Type | Duration | Start | Finish | Predecessors | Total slack | Resources | Work | Cost |
| --- | --- | --- | --- | --- | --- | --- | --- | --- | --- | --- | --- |
| 33 | 5 | **Faza V - Testy** |  | 18d | 2019-03-28 | 2019-04-22 | 21 | 0d |  | 328h | 21,920 |
| 34 | 5.1 | Wykonanie testów z zakresu bezpieczeństwa |  | 7d | 2019-03-28 | 2019-04-05 |  | 1d | Tester | 19h | 950 |
| 35 | 5.2 | Wykonanie testów manualnych |  | 6d | 2019-03-28 | 2019-04-04 |  | 2d | Tester | 16h | 800 |
| 36 | 5.3 | Wykonanie testów jednostkowych |  | 8d | 2019-03-28 | 2019-04-08 |  | 0d | Tester | 29h | 1,450 |
| 37 | 5.4 | Integracja systemów |  | 5d | 2019-04-09 | 2019-04-15 | 34, 35, 36 | 0d | Senior Andorid Developer; Senior iOS Developer; UX Designer; Project Manager | 160h | 11,600 |
| 38 | 5.5 | Wykonanie testów integracji systemów |  | 4d | 2019-04-16 | 2019-04-19 | 37 | 0d | Tester | 32h | 1,600 |
| 39 | 5.6 | Optymalizacja |  | 4d | 2019-04-16 | 2019-04-19 | 37 | 0d | Senior Andorid Developer; Senior iOS Developer | 64h | 4,800 |
| 40 | 5.7 | Protokół odbioru fazy V | milestone | 1d | 2019-04-22 | 2019-04-22 | 38, 39 | 0d | Project Manager | 8h | 720 |
| 41 | 6 | **Faza VI - Wdrożenie** |  | 11d | 2019-04-23 | 2019-05-07 | 33 | 0d |  | 424h | 24,720 |
| 42 | 6.1 | Instalacja ostatecznej wersji w systemie klienta |  | 3d | 2019-04-23 | 2019-04-25 |  | 0d | Senior Andorid Developer; Senior iOS Developer | 48h | 3,600 |
| 43 | 6.2 | Szkolenie użytkowników |  | 7d | 2019-04-26 | 2019-05-06 | 42 | 0d | Project Manager | 36h | 3,240 |
| 44 | 6.3 | Wprowadzenie danych |  | 2d | 2019-04-26 | 2019-04-29 | 42 | 5d | Junior Android Developer; Junior iOS Developer | 16h | 560 |
| 45 | 6.4 | Migracja danych z systemu webowego |  | 3d | 2019-04-26 | 2019-04-30 | 42 | 4d | Senior Andorid Developer; Senior iOS Developer | 48h | 3,600 |
| 46 | 6.5 | Tworzenie dokumentacji użytkownika końcowego |  | 8d | 2019-04-23 | 2019-05-02 |  | 2d | Project Manager; UX Designer | 76h | 5,560 |
| 47 | 6.6 | Tworzenie dokumentacji dla pracowników |  | 10d | 2019-04-23 | 2019-05-06 |  | 0d | Junior Android Developer; Junior iOS Developer; UX Designer | 192h | 7,440 |
| 48 | 6.7 | Protokół odbioru fazy VI | milestone | 1d | 2019-05-07 | 2019-05-07 | 43, 44, 45, 46, 47 | 0d | Project Manager | 8h | 720 |
| 49 | 7 | **Faza VII - Utrzymywanie i ewolucja** |  | 1d? | 2019-05-08 | 2019-05-08 | 41 | 0d |  | 27h | 1,470 |
| 50 | 7.1 | Konserwacja naprawcza |  | 1d? | 2019-05-08 | 2019-05-08 |  | 0d | Junior Android Developer; Junior iOS Developer; Senior Andorid Developer; Senior iOS Developer; Tester | 5h | 270 |
| 51 | 7.2 | Konserwacja adaptacyjna |  | 1d? | 2019-05-08 | 2019-05-08 |  | 0d | Junior Android Developer; Junior iOS Developer; Senior Andorid Developer; Senior iOS Developer; Tester | 5h | 270 |
| 52 | 7.3 | Konserwacja zapobiegawcza |  | 1d? | 2019-05-08 | 2019-05-08 |  | 0d | Junior Android Developer; Junior iOS Developer; Senior Andorid Developer; Senior iOS Developer; Tester | 5h | 270 |
| 53 | 7.4 | Rozszerzanie funkcji |  | 1d? | 2019-05-08 | 2019-05-08 |  | 0d | Junior Android Developer; Junior iOS Developer; Senior Andorid Developer; Senior iOS Developer | 4h | 220 |
| 54 | 7.5 | Dodawanie funkcji |  | 1d? | 2019-05-08 | 2019-05-08 |  | 0d | Junior Android Developer; Junior iOS Developer; Senior Andorid Developer; Senior iOS Developer | 4h | 220 |
| 55 | 7.6 | Modyfikowanie funkcji |  | 1d? | 2019-05-08 | 2019-05-08 |  | 0d | Junior Android Developer; Junior iOS Developer; Senior Andorid Developer; Senior iOS Developer | 4h | 220 |
